# スケジュール_TWLSystemMenu

Schedule from MS Project, 2008-02-08 to 2008-07-10, A marks actual dates.
莉ｻ螟ｩ蝣よｪ蠑丈ｼ夂､ｾ

## Calendars

- 年中無休: Mon-Sun 08:00-12:00, 13:00-17:00.

## Resources

| Resource | Group |
| --- | --- |
| 宮本昌幸 | RED |
| 大江徹 | RED |
| 中島高伸 | RED |
| 吉岡照幸 | RED |
| 村上豊 | RED |
| 白井達広 | RED |
| 神川洋司 | RED |
| 佐藤雅樹 | RED |
| 三田健太朗 | RED |
| 水口裕基 | RED |
| 赤羽淳平 | RED |
| 西川猛司 | RED |
| 吉田光寿 | RED |
| 喜友名毅 | RED-HARD |
| 安達 洋明 | PSEG1 |
| 稲葉 公崇 | PSEG1 |
| 大島 洋一 | PSEG1 |
| 岡島 学 | PSEG1 |
| 奥畑 亮馬 | PSEG1 |
| 北瀬 裕丈 | PSEG1 |
| 白川 英一 | PSEG1 |
| 清木 昌 | PSEG1 |
| 照井 章生 | PSEG1 |
| 徳永 英治 | PSEG1 |
| 西本 隆 | PSEG1 |
| 橋本 英之 | PSEG1 |
| 畠本 稔 | PSEG1 |
| 廣瀬 和樹 | PSEG1 |
| 安本 吉孝 | PSEG1 |
| 矢田 裕人 | PSEG1 |
| 吉崎 浩二 | PSEG1 |
| Atheros | Atheros |
| BroadOn | BroadOn |
| 遠藤高志 | PSEG2 |
| 松島愛佑 | ＵＩＧ |
| 荒木 勉 | ＵＩＧ |
| 川瀬 智広 | ＵＩＧ |
| 河野裕之 | ＵＩＧ |
| 小野沢祐貴 | ＵＩＧ |
| ネットワーク開発部 | ネ開 |
| 斉藤潤一 | RED-HARD |
| 藤田僚平 |  |
| 総務部 |  |
| 和田 |  |
| 中谷 |  |
| 知財部 |  |
| 桑原雅人 | RED-HARD |
| ？ |  |
| 正木義文 | ＵＩＧ |
| Buffalo外注 |  |
| NEC外注 |  |
| 製品技術部 |  |

## Schedule

| ID | WBS | Task | Type | Duration | Start | Finish | Complete | Remaining | Total slack | Free slack | Constraint | Resources | Work | Actual work |
| --- | --- | --- | --- | --- | --- | --- | --- | --- | --- | --- | --- | --- | --- | --- |
| 1 | 1 | **TS-board 3 納品開始** |  | 30d | 2008-02-13 | 2008-03-13 |  |  | 119d |  |  |  |  |  |
| 2 | 1.1 | 先行20台 | milestone | 1d | 2008-02-13 | 2008-02-13 |  |  | 148d |  | start no earlier than 2008-02-13 |  |  |  |
| 3 | 1.2 | 480台(BO:12/170/298) | milestone | 1d | 2008-03-13 | 2008-03-13 |  |  | 119d |  | start no earlier than 2008-03-13 |  |  |  |
| 4 | 2 | ワーキングモデル(10台 BO:0/7/3)納品予定 | milestone | 1d? | 2008-02-15 | 2008-02-15 |  |  | 146d |  | start no earlier than 2008-02-15 |  |  |  |
| 5 | 3 | **IS-TWL-DEBUGGER納品開始** |  | 121d | 2008-03-03 | 2008-07-01 |  |  | 9d |  |  |  |  |  |
| 6 | 3.1 | 先行5台 | milestone | 1d | 2008-03-03 | 2008-03-03 |  |  | 129d |  | start no earlier than 2008-03-03 |  |  |  |
| 7 | 3.2 | 第一弾100台 | milestone | 1d | 2008-04-14 | 2008-04-14 |  |  | 87d | 0d | start no earlier than 2008-04-14 |  |  |  |
| 8 | 3.3 | 第二弾200台 | milestone | 1d | 2008-05-05 | 2008-05-05 |  |  | 66d |  | start no earlier than 2008-05-05 |  |  |  |
| 9 | 3.4 | 第三弾300台 | milestone | 1d | 2008-06-02 | 2008-06-02 |  |  | 38d |  | start no earlier than 2008-06-02 |  |  |  |
| 10 | 3.5 | 月産500台 | milestone | 1d | 2008-07-01 | 2008-07-01 |  |  | 9d |  | start no earlier than 2008-07-01 |  |  |  |
| 11 | 4 | **量産試作納品開始** |  | 93d | 2008-04-09 | 2008-07-10 |  |  | 0d |  |  |  |  |  |
| 12 | 4.1 | ミニ量試200台 | milestone | 1d | 2008-04-09 | 2008-04-09 |  |  | 92d |  | start no earlier than 2008-04-09 |  |  |  |
| 13 | 4.2 | 量試1 600台 | milestone | 1d | 2008-05-01 | 2008-05-01 |  |  | 70d |  | start no earlier than 2008-05-01 |  |  |  |
| 14 | 4.3 | 量試2 600台 | milestone | 1d | 2008-06-04 | 2008-06-04 |  |  | 36d | 0d | start no earlier than 2008-06-04 |  |  |  |
| 15 | 4.4 | 量試3 600台 | milestone | 1d | 2008-07-10 | 2008-07-10 |  |  | 0d |  | start no earlier than 2008-07-10 |  |  |  |
| 16 | 5 | IS-TWL-CAPTURE試作品納品開始 | milestone | 1d? | 2008-04-01 | 2008-04-01 |  |  | 100d |  | start no earlier than 2008-04-01 |  |  |  |
| 18 | 6 | **REDランチャー開発マイルストーン** |  | 66d | 2008-02-08 | 2008-04-13 |  |  | 88d |  |  |  |  |  |
| 19 | 6.1 | スタート | milestone | 1d | 2008-02-08 | 2008-02-08 |  |  | 90d | 2d | start no earlier than 2008-02-08 |  |  |  |
| 20 | 6.2 | 第1ステップ（2月末） | milestone | 1d | 2008-03-02 | 2008-03-02 |  |  | 103d | 0d | start no earlier than 2008-03-02 |  |  |  |
| 21 | 6.3 | 第2ステップ（3月中旬） | milestone | 1d | 2008-03-16 | 2008-03-16 |  |  | 103d | 0d | start no earlier than 2008-03-16 |  |  |  |
| 22 | 6.4 | 第3ステップ（3月末） | milestone | 1d | 2008-03-30 | 2008-03-30 |  |  | 102d | 0d | start no earlier than 2008-03-30 |  |  |  |
| 23 | 6.5 | 第4ステップ | milestone | 1d | 2008-04-06 | 2008-04-06 |  |  | 95d |  | start no earlier than 2008-04-06 |  |  |  |
| 24 | 6.6 | 第5ステップ | milestone | 1d | 2008-04-13 | 2008-04-13 |  |  | 88d |  | start no earlier than 2008-04-13 |  |  |  |
| 27 | 7 | **仕様策定** |  | 70d? | 2008-02-08 A | 2008-04-17 | 43% | 39.72d? | 84d |  |  |  | 8016h | 4093.6h |
| 28 | 7.1 | **ランチャー** |  | 70d? | 2008-02-08 A | 2008-04-17 | 31% | 48.46d? | 84d |  |  |  | 6056h | 2214.4h |
| 29 | 7.1.1 | アプリのNintendoロゴ表示 |  | 8d | 2008-02-11 A | 2008-02-20 A | 100% |  |  |  | finish no earlier than 2008-02-20 | 松島愛佑; 三田健太朗; 知財部 | 192h | 192h |

Notes:
- 24: システムメニューデバッグ開始目標日

| ID | WBS | Task | Duration | Start | Finish | Predecessors | Complete | Remaining | Total slack | Free slack | Constraint | Resources | Work | Actual work |
| --- | --- | --- | --- | --- | --- | --- | --- | --- | --- | --- | --- | --- | --- | --- |
| 30 | 7.1.2 | **EURA表示** | 61d | 2008-02-11 | 2008-04-11 |  |  |  | 88d |  |  |  | 1080h |  |
| 31 | 7.1.2.1 | NCL Fix | 25d | 2008-02-11 | 2008-03-16 | 19, 20SF |  |  | 88d | 0d | finish no earlier than 2008-03-16 | 三田健太朗; 総務部; 松島愛佑 | 600h |  |
| 32 | 7.1.2.2 | NOA, NOE承認 | 20d | 2008-03-17 | 2008-04-11 | 31, 22SF |  |  | 88d |  | start no earlier than 2008-02-08 | 三田健太朗; 総務部; 松島愛佑 | 480h |  |
| 33 | 7.1.3 | **ペアレンタルコントロール** | 70d? | 2008-02-08 A | 2008-04-17 |  | 13% | 61.08d? | 84d |  |  |  | 1128h | 115.2h |
| 34 | 7.1.3.1 | 通信方式や通信内容に対する制限 | 50d? | 2008-02-08 | 2008-04-17 |  |  |  | 84d |  | start no earlier than 2008-02-08 | 三田健太朗 | 400h |  |
| 35 | 7.1.3.2 | レーティング以外の制御 | 16d | 2008-02-08 A | 2008-02-29 |  | 90% | 1.6d | 97d | 2d |  | 松島愛佑 | 128h | 115.2h |
| 36 | 7.1.3.3 | 秘密の質問項目 | 22d? | 2008-02-08 | 2008-02-29 |  |  |  | 132d |  | start no earlier than 2008-02-08 |  |  |  |
| 37 | 7.1.3.4 | NOA,NOE承認 | 25d? | 2008-03-03 | 2008-04-06 | 35 |  |  | 95d |  | finish no earlier than 2008-04-06 | 三田健太朗; 総務部; 松島愛佑 | 600h |  |
| 38 | 7.1.4 | **本体設定データ** | 35d | 2008-02-11 A | 2008-03-16 |  | 75% | 8.75d | 116d |  |  |  | 720h | 600h |
| 39 | 7.1.4.1 | ペアレンタルコントロール（レーティング以外のデータ構造） | 25d | 2008-02-11 A | 2008-03-16 | 19, 20SF | 90% | 2.5d | 116d |  | finish no earlier than 2008-03-16 | 松島愛佑; 総務部; 三田健太朗 | 600h | 540h |
| 40 | 7.1.4.2 | 顔写真 | 15d | 2008-02-11 A | 2008-03-02 | 19, 20SF | 50% | 7.5d | 131d |  | start no earlier than 2008-02-08 | 正木義文 | 120h | 60h |
| 41 | 7.1.5 | **NANDファイルアクセス制限** | 34d? | 2008-02-11 | 2008-03-16 |  |  |  | 116d |  |  |  | 1096h |  |
| 42 | 7.1.5.1 | 同一メーカの他タイトルのセーブデータ（ReadOnly） | 25d | 2008-02-11 | 2008-03-16 | 19, 21SF |  |  | 116d |  | finish no earlier than 2008-02-29 | 吉岡照幸 | 200h |  |
| 43 | 7.1.5.2 | TMPブートをする際のTMPフォルダ（Write） | 25d | 2008-02-11 | 2008-03-16 | 19, 21SF |  |  | 116d |  | start no earlier than 2008-02-08 | 吉岡照幸 | 200h |  |
| 44 | 7.1.5.3 | フォントの共有コンテンツ化（ReadOnly） | 25d | 2008-02-11 | 2008-03-16 | 19, 21SF |  |  | 116d |  | start no earlier than 2008-02-08 | 吉岡照幸 | 200h |  |
| 45 | 7.1.5.4 | ESライブラリのほぼ全部アクセス | 25d | 2008-02-11 | 2008-03-16 | 19, 21SF |  |  | 116d |  | start no earlier than 2008-02-08 | 吉岡照幸 | 200h |  |
| 46 | 7.1.5.5 | 本体設定データ（ReadOnly） | 25d | 2008-02-11 | 2008-03-16 | 19, 21SF |  |  | 116d |  | start no earlier than 2008-02-08 | 吉岡照幸 | 200h |  |
| 47 | 7.1.5.6 | shared2の運用方針 | 12d? | 2008-02-14 | 2008-02-29 |  |  |  | 132d |  | finish no earlier than 2008-02-29 | 吉岡照幸 | 96h |  |
| 48 | 7.1.6 | **SDに作成するフォルダ名** | 37d? | 2008-02-08 A | 2008-03-16 |  | 39% | 22.56d? | 117d |  |  |  | 448h | 248h |
| 49 | 7.1.6.1 | TWL正式名称を使えるかを確認 | 25d | 2008-02-11 | 2008-03-16 | 19, 21SF |  |  | 116d |  | start no earlier than 2008-02-08 | 三田健太朗 | 200h |  |
| 50 | 7.1.6.2 | パス名調査 | 1d? | 2008-02-08 A | 2008-02-08 A |  | 100% |  |  |  |  | 白井達広 | 8h | 8h |
| 51 | 7.1.6.3 | TWLでのフォルダ構成のたたき台 | 15d | 2008-02-11 A | 2008-03-02 A | 19, 20SF | 100% |  |  |  | start no earlier than 2008-02-08 | 三田健太朗; 吉岡照幸 | 240h | 240h |
| 52 | 7.1.7 | **NTRアプリのR4対策** | 20d | 2008-02-11 | 2008-03-02 |  |  |  | 130d |  |  |  | 120h |  |
| 53 | 7.1.7.1 | どのレベルでやるかの方針決定 | 15d | 2008-02-11 | 2008-03-02 | 19, 20SF |  |  | 130d |  | start no earlier than 2008-02-08 | ？ | 120h |  |

| ID | WBS | Task | Duration | Start | Finish | Predecessors | Complete | Remaining | Total slack | Free slack | Constraint | Resources | Work | Actual work |
| --- | --- | --- | --- | --- | --- | --- | --- | --- | --- | --- | --- | --- | --- | --- |
| 54 | 7.1.8 | **アプリジャンプ** | 36d? | 2008-02-08 A | 2008-03-14 |  | 74% | 9.33d? | 118d |  |  |  | 432h | 320h |
| 55 | 7.1.8.1 | 仕様案策定 | 19d? | 2008-02-08 A | 2008-03-05 A |  | 100% |  |  |  | finish no earlier than 2008-03-05 | 吉岡照幸 | 152h | 152h |
| 56 | 7.1.8.2 | 仕様案アンケート | 4d | 2008-03-06 | 2008-03-11 | 55 |  |  | 118d | 0d | start no earlier than 2008-03-06 | 三田健太朗 | 32h |  |
| 57 | 7.1.8.3 | 仕様FIX | 3d | 2008-03-12 | 2008-03-14 | 56 |  |  | 118d |  | finish no earlier than 2008-03-14 | 吉岡照幸 | 24h |  |
| 58 | 7.1.8.4 | ファイル関連付けアプリ起動をやるかやらないか？ | 15d | 2008-02-11 A | 2008-03-02 A | 19, 20SF | 100% |  |  |  |  | 吉岡照幸 | 120h | 120h |
| 59 | 7.1.8.5 | TMPブート、メモリブートのNTRアプリ対応 | 5d? | 2008-02-18 A | 2008-02-22 A |  | 100% |  |  |  | start no earlier than 2008-02-18 | 吉岡照幸 | 40h | 40h |
| 60 | 7.1.8.6 | NTRモード移行後のHWリセットでは、アプリジャンプを無効にする仕組み | 1d? | 2008-02-08 A | 2008-02-08 A |  | 100% |  |  |  |  | 吉岡照幸 | 8h | 8h |
| 61 | 7.1.8.7 | 特許調査 | 7d? | 2008-03-06 | 2008-03-14 |  |  |  | 118d |  | finish no earlier than 2008-03-14 | 知財部 | 56h |  |
| 62 | 7.1.9 | **バナー仕様** | 8d | 2008-02-08 A | 2008-02-15 A |  | 100% |  |  |  |  |  | 288h | 288h |
| 63 | 7.1.9.1 | TWLバナー | 6d | 2008-02-08 A | 2008-02-15 A | 19, 21SF | 100% |  |  |  |  | 吉岡照幸; 川瀬 智広; 荒木 勉 | 144h | 144h |
| 64 | 7.1.9.2 | サブバナー | 6d | 2008-02-08 A | 2008-02-15 A | 19, 21SF | 100% |  |  |  |  | 吉岡照幸; 川瀬 智広; 荒木 勉 | 144h | 144h |
| 65 | 7.1.10 | **バックライト輝度の値、段階** | 22d? | 2008-02-08 A | 2008-02-29 |  | 72% | 6.16d? | 132d |  |  |  | 344h | 288h |
| 66 | 7.1.10.1 | 上限、下限決定 | 9d | 2008-02-08 A | 2008-02-20 A |  | 100% |  |  |  | start no earlier than 2008-02-08 | 斉藤潤一; 喜友名毅 | 144h | 144h |
| 67 | 7.1.10.2 | 段階数、各輝度レベル決定 | 9d | 2008-02-08 A | 2008-02-20 A |  | 100% |  |  |  | start no earlier than 2008-02-08 | 斉藤潤一; 喜友名毅 | 144h | 144h |
| 68 | 7.1.10.3 | UIG承認 | 7d? | 2008-02-21 | 2008-02-29 | 66, 67 |  |  | 132d |  | start no earlier than 2008-02-21 | 松島愛佑 | 56h |  |
| 69 | 7.1.11 | **バッテリエクステンション** | 33d? | 2008-02-08 A | 2008-03-11 |  | 82% | 5.88d? | 107d | 0d |  |  | 184h | 151.2h |
| 70 | 7.1.11.1 | データ測定 | 21d? | 2008-02-08 A | 2008-03-09 |  | 90% | 2.1d? | 107d | 0d | finish no earlier than 2008-03-09 | 藤田僚平 | 168h | 151.2h |
| 71 | 7.1.11.2 | 仕様策定 | 2d | 2008-03-10 | 2008-03-11 | 70 |  |  | 107d |  | finish no earlier than 2008-02-29 | 桑原雅人 | 16h |  |
| 72 | 7.1.12 | 鍵の引渡し | 3d? | 2008-03-06 A | 2008-03-10 |  | 50% | 1.5d? | 122d |  | finish no earlier than 2008-03-10 | 吉岡照幸 | 24h | 12h |
| 73 | 7.2 | **eTicket** | 29d? | 2008-02-08 A | 2008-03-07 |  | 94% | 1.6d? | 125d |  |  |  | 536h | 506.4h |
| 74 | 7.2.1 | 鍵管理 | 21d? | 2008-02-08 A | 2008-03-07 A |  | 100% |  |  |  | start no earlier than 2008-02-08 | 廣瀬 和樹 | 168h | 168h |
| 75 | 7.2.2 | TitleID | 21d? | 2008-02-08 A | 2008-03-07 A |  | 100% |  |  |  | start no earlier than 2008-02-08 | 廣瀬 和樹 | 168h | 168h |
| 76 | 7.2.3 | **ネットワークアップデート** | 19d? | 2008-02-18 A | 2008-03-07 |  | 85% | 2.81d? | 125d |  |  |  | 200h | 170.4h |
| 77 | 7.2.3.1 | ゲームバージョンの運用方法 | 12d? | 2008-02-18 A | 2008-03-04 |  | 80% | 2.4d? | 128d |  | start no earlier than 2008-02-18 | 廣瀬 和樹 | 96h | 76.8h |
| 78 | 7.2.3.2 | ACアダプタを差した状態でNUPしたらシャットダウンしない保証があるか調査 | 13d? | 2008-02-20 A | 2008-03-07 |  | 90% | 1.3d? | 125d |  | finish no earlier than 2008-03-07 | 斉藤潤一 | 104h | 93.6h |

| ID | WBS | Task | Duration | Start | Finish | Predecessors | Complete | Remaining | Total slack | Constraint | Resources | Work | Actual work |
| --- | --- | --- | --- | --- | --- | --- | --- | --- | --- | --- | --- | --- | --- |
| 79 | 7.3 | **無線** | 29d? | 2008-02-08 A | 2008-03-07 |  | 99% | 0.35d? | 125d |  |  | 1384h | 1372.8h |
| 80 | 7.3.1 | **WiFi設定** | 0.5d? | 2008-02-08 A | 2008-02-08 |  | 30% | 0.35d? | 153.5d |  |  | 16h | 4.8h |
| 81 | 7.3.1.1 | WiFi設定移行ルーチン仕様 | 0.5d? | 2008-02-08 A | 2008-02-08 |  | 30% | 0.35d? | 153.5d |  | 水口裕基; ネットワーク開発部 | 8h | 2.4h |
| 82 | 7.3.1.2 | MTUなどの設定項目仕様 | 0.5d? | 2008-02-08 A | 2008-02-08 |  | 30% | 0.35d? | 153.5d |  | 水口裕基; ネットワーク開発部 | 8h | 2.4h |
| 83 | 7.3.2 | WiFiエミュレーション | 15d | 2008-02-11 A | 2008-03-02 A | 19, 20SF | 100% |  |  |  | 大江徹; 佐藤雅樹; 水口裕基 | 360h | 360h |
| 84 | 7.3.3 | ファームロード | 21d? | 2008-02-08 A | 2008-03-07 A |  | 100% |  |  |  | 大江徹; 佐藤雅樹; 水口裕基 | 504h | 504h |
| 85 | 7.3.4 | 無線終端処理 | 21d? | 2008-02-08 A | 2008-03-07 A |  | 100% |  |  |  | 大江徹; 佐藤雅樹; 水口裕基 | 504h | 504h |
| 86 | 7.4 | **ISデバッガ** | 1d? | 2008-02-08 | 2008-02-08 |  |  |  | 153d |  |  | 40h |  |
| 87 | 7.4.1 | 開発マイルストーンをまとめる | 1d? | 2008-02-08 | 2008-02-08 |  |  |  | 153d |  | ？ | 8h |  |
| 88 | 7.4.2 | 開発用カード、製品用カード動作をどのように対応するか？ | 1d? | 2008-02-08 | 2008-02-08 |  |  |  | 153d |  | ？ | 8h |  |
| 89 | 7.4.3 | デバッガ、キャプチャで、開発用SRL、製品用SRLをどのように動作させるか？ | 1d? | 2008-02-08 | 2008-02-08 |  |  |  | 153d |  | ？ | 8h |  |
| 90 | 7.4.4 | システムアップデートをどのようにサポートするか？ | 1d? | 2008-02-08 | 2008-02-08 |  |  |  | 153d |  | ？ | 8h |  |
| 91 | 7.4.5 | NANDアプリインポート方法（NMenuのみに制限？） | 1d? | 2008-02-08 | 2008-02-08 |  |  |  | 153d |  | ？ | 8h |  |
| 93 | 8 | **X3ボード対応** | 20d | 2008-02-11 A | 2008-03-02 A |  | 100% |  |  |  |  | 240h | 240h |
| 94 | 8.1 | ランチャー | 15d | 2008-02-11 A | 2008-03-02 A | 19, 20SF | 100% |  |  | finish no earlier than 2008-02-18 | 中島高伸 | 120h | 120h |
| 95 | 8.2 | ISデバッガ | 15d | 2008-02-11 A | 2008-03-02 A | 19, 20SF | 100% |  |  | finish no earlier than 2008-02-18 | 中島高伸 | 120h | 120h |
| 97 | 9 | **REDシステムメニュー** | 67d? | 2008-02-08 A | 2008-04-14 |  | 48% | 35.06d? | 87d |  |  | 9256h | 4388h |
| 98 | 9.1 | **ランチャー** | 67d? | 2008-02-08 A | 2008-04-14 |  | 46% | 35.98d? | 87d |  |  | 8944h | 4125.6h |
| 99 | 9.1.1 | ランチャー用ARM7コンポーネント | 25d | 2008-02-11 A | 2008-03-16 | 19, 21SF | 50% | 12.5d | 117d | start no earlier than 2008-02-08 | 吉岡照幸 | 200h | 100h |
| 100 | 9.1.2 | **アプリ起動** | 51d? | 2008-02-08 A | 2008-03-30 |  | 46% | 27.38d? | 103d |  |  | 2808h | 1288h |
| 101 | 9.1.2.1 | **起動時処理** | 36d? | 2008-02-08 A | 2008-03-14 |  | 46% | 19.38d? | 118d |  |  | 1464h | 664h |
| 102 | 9.1.2.1.1 | **鍵の引渡し** | 1d? | 2008-02-08 | 2008-02-08 |  |  |  | 153d |  | 吉田光寿 | 24h |  |
| 103 | 9.1.2.1.1.1 | AES鍵・AES種引渡し | 1d? | 2008-02-08 | 2008-02-08 |  |  |  | 153d |  | 吉岡照幸 | 8h |  |
| 104 | 9.1.2.1.1.2 | ハードウェアAESスロット設定・クリア | 1d? | 2008-02-08 | 2008-02-08 |  |  |  | 153d |  | 吉岡照幸 | 8h |  |
| 105 | 9.1.2.1.2 | NANDファイルのアクセス制限 | 15d | 2008-02-11 A | 2008-02-29 |  | 50% | 7.5d | 132d |  | 吉岡照幸 | 120h | 60h |
| 106 | 9.1.2.1.3 | カード電源状態 | 15d | 2008-02-08 | 2008-02-28 |  |  |  | 133d |  | 赤羽淳平 | 120h |  |
| 107 | 9.1.2.1.4 | カード活線挿抜可否 | 15d | 2008-02-08 | 2008-02-28 |  |  |  | 133d |  | 中島高伸 | 120h |  |
| 108 | 9.1.2.1.5 | SDカードアクセス可否 | 15d | 2008-02-11 A | 2008-02-29 |  | 50% | 7.5d | 132d |  | 中島高伸 | 120h | 60h |
| 109 | 9.1.2.1.6 | Codecモード切替 | 15d | 2008-02-11 A | 2008-03-02 A |  | 100% |  |  |  | 中島高伸 | 120h | 120h |
| 110 | 9.1.2.1.7 | SCFGレジスタロック（ユーザーアプリは必ず） | 15d | 2008-02-11 A | 2008-03-02 A |  | 100% |  |  |  | 中島高伸 | 120h | 120h |
| 111 | 9.1.2.1.8 | アプリ再配置 | 15d | 2008-02-11 A | 2008-03-02 A |  | 100% |  |  |  | 吉田光寿 | 120h | 120h |
| 112 | 9.1.2.1.9 | メモリクリア | 15d | 2008-02-08 A | 2008-02-28 |  | 70% | 4.5d | 133d |  | 中島高伸; 吉田光寿 | 240h | 168h |
| 113 | 9.1.2.1.10 | 速度チューニング | 10d? | 2008-03-03 | 2008-03-14 |  |  |  | 116d | start no earlier than 2008-03-03 | 吉田光寿; 村上豊 | 160h |  |

| ID | WBS | Task | Duration | Start | Finish | Predecessors | Complete | Remaining | Total slack | Free slack | Constraint | Resources | Work | Actual work |
| --- | --- | --- | --- | --- | --- | --- | --- | --- | --- | --- | --- | --- | --- | --- |
| 114 | 9.1.2.1.11 | **レジスタクリア** | 33d | 2008-02-11 A | 2008-03-14 |  | 8% | 30.36d | 118d |  |  |  | 200h | 16h |
| 115 | 9.1.2.1.11.1 | 各ハード担当者にクリアする領域を洗い出してもらう | 20d | 2008-02-11 A | 2008-03-07 | 19 | 10% | 18d | 118d | 2d | finish no earlier than 2008-03-07 | 吉岡照幸 | 160h | 16h |
| 116 | 9.1.2.1.11.2 | クリア処理実装 | 5d | 2008-03-10 | 2008-03-14 | 115, 20SF |  |  | 116d |  |  | 中島高伸 | 40h |  |
| 117 | 9.1.2.2 | **アプリ認証処理** | 48d? | 2008-02-11 A | 2008-03-30 |  | 31% | 33.23d? | 103d |  |  |  | 1040h | 320h |
| 118 | 9.1.2.2.1 | **NTRアプリのR4対策** | 48d | 2008-02-11 | 2008-03-30 |  |  |  | 102d |  |  |  | 560h |  |
| 119 | 9.1.2.2.1.1 | **ダイジェストとるやつ** | 48d | 2008-02-11 | 2008-03-30 |  |  |  | 102d |  |  |  | 560h |  |
| 120 | 9.1.2.2.1.1.1 | TWL側実装 | 35d | 2008-02-11 | 2008-03-30 | 19, 22SF |  |  | 102d |  |  | 村上豊 | 280h |  |
| 121 | 9.1.2.2.1.1.2 | ダイジェストリスト作成 | 35d | 2008-02-11 | 2008-03-30 | 19, 22SF |  |  | 102d |  |  | 村上豊 | 280h |  |
| 122 | 9.1.2.2.2 | **TWLアプリ** | 33d? | 2008-02-11 A | 2008-03-14 |  | 67% | 11d? | 118d |  |  |  | 480h | 320h |
| 123 | 9.1.2.2.2.1 | カードアプリ | 15d | 2008-02-11 A | 2008-03-02 A | 19, 20SF | 100% |  |  |  | finish no earlier than 2008-02-22 | 吉田光寿 | 120h | 120h |
| 124 | 9.1.2.2.2.2 | NANDアプリ | 15d | 2008-02-11 A | 2008-03-02 A | 19, 20SF | 100% |  |  |  | finish no earlier than 2008-02-22 | 吉田光寿 | 120h | 120h |
| 125 | 9.1.2.2.2.3 | TMPブートアプリ | 10d? | 2008-02-18 A | 2008-03-02 A | 19, 20SF | 100% |  |  |  | finish no earlier than 2008-03-02 | 吉田光寿 | 80h | 80h |
| 126 | 9.1.2.2.2.4 | NTRアプリ（PictChat,DS-DSプレイ） | 20d? | 2008-02-18 | 2008-03-14 | 19, 20SF |  |  | 116d |  | finish no earlier than 2008-03-14 | 吉田光寿 | 160h |  |
| 127 | 9.1.2.3 | **NTRアプリ起動** | 25d | 2008-02-11 A | 2008-03-06 A |  | 100% |  |  |  |  |  | 304h | 304h |
| 128 | 9.1.2.3.1 | NTRモード切替 | 19d | 2008-02-11 A | 2008-03-06 A | 112FF, 114FF, 21SF | 100% |  |  |  |  | 中島高伸 | 152h | 152h |
| 129 | 9.1.2.3.2 | NTR無線パッチ | 19d | 2008-02-11 A | 2008-03-06 A | 19, 21SF | 100% |  |  |  | start no earlier than 2008-02-08 | 中島高伸 | 152h | 152h |
| 130 | 9.1.3 | **アプリジャンプ** | 54d | 2008-02-11 A | 2008-04-04 |  | 83% | 9d | 97d |  |  |  | 400h | 360h |
| 131 | 9.1.3.1 | **任意アプリの直接起動** | 54d | 2008-02-11 A | 2008-04-04 |  | 86% | 7.71d | 97d |  |  |  | 280h | 240h |
| 132 | 9.1.3.1.1 | 未ロード状態のアプリ起動 | 15d | 2008-02-11 A | 2008-03-02 A | 19, 20SF | 100% |  |  |  |  | 吉田光寿 | 120h | 120h |
| 133 | 9.1.3.1.2 | NANDのImport（本来はTMP）フォルダに一時格納された状態のアプリ起動 | 15d | 2008-02-11 A | 2008-03-02 A | 19, 20SF | 100% |  |  |  |  | 吉田光寿 | 120h | 120h |
| 134 | 9.1.3.1.3 | ImportフォルダからTMPフォルダへの一時格納場所変更（ES待ち） | 5d | 2008-03-31 | 2008-04-04 | 257 |  |  | 95d |  | start no earlier than 2008-03-17 | 吉田光寿 | 40h |  |
| 135 | 9.1.3.2 | ラッパーAPI作成 | 4d | 2008-03-07 | 2008-03-10 |  |  |  | 122d |  | finish no earlier than 2008-03-10 |  |  |  |
| 136 | 9.1.3.3 | ランチャーメニューに戻る | 15d | 2008-02-11 A | 2008-03-02 A | 19, 20SF | 100% |  |  |  |  | 吉田光寿 | 120h | 120h |
| 137 | 9.1.4 | Hot/Coldスタート判定 | 15d | 2008-02-11 A | 2008-03-02 | 19, 20SF | 80% | 3d | 131d |  |  | 中島高伸; 吉田光寿 | 240h | 192h |
| 138 | 9.1.5 | TMP（ESのバグのためImport）フォルダクリーン | 15d | 2008-02-11 A | 2008-03-02 A | 19, 20SF | 100% |  |  |  |  | 吉田光寿 | 120h | 120h |
| 139 | 9.1.6 | TMPフォルダクリーン | 5d | 2008-03-31 | 2008-04-04 | 257 |  |  | 95d |  |  | 吉田光寿 | 40h |  |
| 140 | 9.1.7 | 本体設定データetcのロード | 15d | 2008-02-11 A | 2008-03-02 | 19, 20SF | 80% | 3d | 131d |  |  | 吉岡照幸 | 120h | 96h |
| 141 | 9.1.8 | RTC初期化 | 15d | 2008-02-11 A | 2008-03-02 | 19, 20SF | 80% | 3d | 131d |  |  | 吉岡照幸 | 120h | 96h |
| 142 | 9.1.9 | 初回バックライトON | 15d | 2008-02-11 | 2008-03-02 | 19, 20SF |  |  | 130d |  |  | 吉岡照幸 | 120h |  |

| ID | WBS | Task | Duration | Start | Finish | Predecessors | Complete | Remaining | Total slack | Free slack | Constraint | Resources | Work | Actual work |
| --- | --- | --- | --- | --- | --- | --- | --- | --- | --- | --- | --- | --- | --- | --- |
| 143 | 9.1.10 | **無線** | 43d? | 2008-02-08 A | 2008-03-21 |  | 57% | 18.66d? | 111d |  |  |  | 480h | 275.2h |
| 144 | 9.1.10.1 | **新無線ファームロード** | 43d? | 2008-02-08 A | 2008-03-21 |  | 57% | 18.56d? | 111d |  |  |  | 464h | 267.2h |
| 145 | 9.1.10.1.1 | ダミーROMヘッダ作成ツール | 1d | 2008-02-08 A | 2008-02-08 A |  | 100% |  |  |  |  | 宮本昌幸 | 8h | 8h |
| 146 | 9.1.10.1.2 | **ファーム** | 32d? | 2008-02-08 A | 2008-03-10 |  | 52% | 15.33d? | 122d |  |  |  | 200h | 108h |
| 147 | 9.1.10.1.2.1 | ファーム作成 | 19d? | 2008-02-08 A | 2008-03-05 |  | 50% | 9.5d? | 127d |  | finish no earlier than 2008-03-05 | Atheros | 152h | 76h |
| 148 | 9.1.10.1.2.2 | **NAND保存フォーマットに変換** | 15d? | 2008-02-25 A | 2008-03-10 |  | 60% | 6d? | 122d |  |  |  | 48h | 32h |
| 149 | 9.1.10.1.2.2.1 | 仕様策定 | 1d | 2008-03-03 A | 2008-03-03 A |  | 100% |  |  |  |  | 佐藤雅樹; 吉岡照幸 | 16h | 16h |
| 150 | 9.1.10.1.2.2.2 | 旧フォーマット実装 | 2d? | 2008-02-25 A | 2008-02-26 A |  | 100% |  |  |  |  | 佐藤雅樹 | 16h | 16h |
| 151 | 9.1.10.1.2.2.3 | 新フォーマット実装 | 2d | 2008-03-07 | 2008-03-10 |  |  |  | 122d |  | start no earlier than 2008-03-07 | 佐藤雅樹 | 16h |  |
| 152 | 9.1.10.1.3 | **実装** | 43d? | 2008-02-08 A | 2008-03-21 |  | 59% | 17.6d? | 111d |  |  |  | 256h | 151.2h |
| 153 | 9.1.10.1.3.1 | 無線ライブラリ | 12d? | 2008-02-08 A | 2008-02-25 |  | 70% | 3.6d? | 136d |  | start no earlier than 2008-02-08 | 佐藤雅樹 | 96h | 67.2h |
| 154 | 9.1.10.1.3.2 | ランチャー仮実装 | 15d | 2008-02-11 A | 2008-03-02 | 19, 20SF | 70% | 4.5d | 131d |  | start no earlier than 2008-02-08 | 宮本昌幸 | 120h | 84h |
| 155 | 9.1.10.1.3.3 | ランチャー本実装 | 5d? | 2008-03-17 | 2008-03-21 | 225 |  |  | 109d |  | start no earlier than 2008-03-10 | 宮本昌幸 | 40h |  |
| 156 | 9.1.10.2 | **無線終端処理** | 1d? | 2008-02-08 A | 2008-02-08 |  | 50% | 0.5d? | 153d |  |  |  | 16h | 8h |
| 157 | 9.1.10.2.1 | 無線ライブラリ | 1d? | 2008-02-08 A | 2008-02-08 A |  | 100% |  |  |  |  | 佐藤雅樹 | 8h | 8h |
| 158 | 9.1.10.2.2 | ランチャー実装 | 1d? | 2008-02-08 | 2008-02-08 |  |  |  | 153d |  |  | 吉田光寿 | 8h |  |
| 159 | 9.1.11 | アプリリスト取得 | 15d | 2008-02-11 A | 2008-03-02 | 19, 20SF | 70% | 4.5d | 131d |  |  | 吉田光寿 | 120h | 84h |
| 160 | 9.1.12 | **バナー** | 33d? | 2008-02-11 A | 2008-03-14 |  | 76% | 8.07d? | 118d |  |  |  | 496h | 392h |
| 161 | 9.1.12.1 | バナードライバ | 15d | 2008-02-11 A | 2008-03-02 | 19, 20SF | 90% | 1.5d | 131d |  |  | 吉田光寿 | 120h | 108h |
| 162 | 9.1.12.2 | サブバナー | 17d? | 2008-02-21 A | 2008-03-14 |  | 50% | 8.5d? | 118d |  | start no earlier than 2008-02-21 | 吉田光寿 | 136h | 68h |
| 163 | 9.1.12.3 | サブバナーファイル（FSレイヤ） | 15d | 2008-02-11 A | 2008-03-02 | 19, 20SF | 90% | 1.5d | 131d |  |  | 畠本 稔; 吉崎 浩二 | 240h | 216h |
| 164 | 9.1.13 | **活線挿抜** | 50d? | 2008-02-08 A | 2008-03-28 |  | 43% | 28.28d? | 104d |  |  |  | 1952h | 848h |
| 165 | 9.1.13.1 | **活線挿抜アルゴリズムをFIX** | 33d | 2008-02-11 A | 2008-03-14 |  | 70% | 9.9d | 104d | 2d |  |  | 400h | 280h |
| 166 | 9.1.13.1.1 | コードの整理 | 25d | 2008-02-11 A | 2008-03-14 | 19, 20SF | 70% | 7.5d | 104d |  | finish no earlier than 2008-03-14 | 赤羽淳平 | 200h | 140h |
| 167 | 9.1.13.1.2 | 挿抜負荷耐性 | 25d | 2008-02-11 A | 2008-03-14 | 19, 20SF | 70% | 7.5d | 104d |  | finish no earlier than 2008-03-14 | 赤羽淳平 | 200h | 140h |

| ID | WBS | Task | Duration | Start | Finish | Predecessors | Complete | Remaining | Total slack | Free slack | Constraint | Resources | Work | Actual work |
| --- | --- | --- | --- | --- | --- | --- | --- | --- | --- | --- | --- | --- | --- | --- |
| 168 | 9.1.13.2 | **ロード** | 50d? | 2008-02-08 A | 2008-03-28 |  | 37% | 31.7d? | 104d |  |  |  | 1552h | 568h |
| 169 | 9.1.13.2.1 | NTRカード対応 | 15d | 2008-02-11 A | 2008-03-02 A | 19, 20SF | 100% |  |  |  |  | 赤羽淳平 | 120h | 120h |
| 170 | 9.1.13.2.2 | TWLカード対応 | 15d | 2008-02-25 | 2008-03-14 | 19, 20SF |  |  | 116d |  | finish no earlier than 2008-03-14 | 赤羽淳平 | 120h |  |
| 171 | 9.1.13.2.3 | カードType1,Type2対応 | 15d | 2008-02-11 A | 2008-03-02 A | 19, 20SF | 100% |  |  |  | finish no earlier than 2008-02-29 | 赤羽淳平 | 120h | 120h |
| 172 | 9.1.13.2.4 | **Blowfishデコード** | 20d | 2008-02-11 A | 2008-03-02 A |  | 100% |  |  |  |  |  | 240h | 240h |
| 173 | 9.1.13.2.4.1 | カードのコマンド | 15d | 2008-02-11 A | 2008-03-02 A | 19, 20SF | 100% |  |  |  | finish no earlier than 2008-02-29 | 赤羽淳平 | 120h | 120h |
| 174 | 9.1.13.2.4.2 | SRLの先頭2KB | 15d | 2008-02-11 A | 2008-03-02 A | 19, 20SF | 100% |  |  |  |  | 赤羽淳平 | 120h | 120h |
| 175 | 9.1.13.2.5 | **AESデコード** | 36d? | 2008-02-08 | 2008-03-14 |  |  |  | 118d |  |  |  | 416h |  |
| 176 | 9.1.13.2.5.1 | 鍵のセット | 26d? | 2008-02-08 | 2008-03-14 |  |  |  | 118d |  | finish no earlier than 2008-03-14 | 赤羽淳平 | 208h |  |
| 177 | 9.1.13.2.5.2 | ARM9.Ltd.staticの先頭16KB | 26d? | 2008-02-08 | 2008-03-14 |  |  |  | 118d |  | finish no earlier than 2008-03-14 | 赤羽淳平 | 208h |  |
| 178 | 9.1.13.2.6 | **カードスロットAでの動作** | 19d | 2008-02-25 | 2008-03-14 |  |  |  | 116d |  |  |  | 120h |  |
| 179 | 9.1.13.2.6.1 | SDKコードとのカードアクセス排他制御 | 15d | 2008-02-25 | 2008-03-14 | 19, 20SF |  |  | 116d |  | finish no earlier than 2008-03-14 | 赤羽淳平 | 120h |  |
| 180 | 9.1.13.2.7 | **Blowfish鍵管理** | 2d? | 2008-03-06 A | 2008-03-07 |  | 50% | 1d? | 125d |  |  |  | 16h | 8h |
| 181 | 9.1.13.2.7.1 | Blowfish鍵の受け渡し | 1d | 2008-03-06 A | 2008-03-06 A | 19, 20SF | 100% |  |  |  | start no earlier than 2008-03-06 | 中島高伸 | 8h | 8h |
| 182 | 9.1.13.2.7.2 | 受け渡された鍵の使用 | 1d? | 2008-03-07 | 2008-03-07 | 181 |  |  | 125d |  |  | 赤羽淳平 | 8h |  |
| 183 | 9.1.13.2.8 | DMAの使用 | 10d? | 2008-03-03 A | 2008-03-14 A |  | 100% |  |  |  | finish no earlier than 2008-03-14 | 赤羽淳平 | 80h | 80h |
| 184 | 9.1.13.2.9 | 表示との連動 | 15d | 2008-02-11 | 2008-03-02 | 19, 20SF |  |  | 130d |  | start no earlier than 2008-02-08 | 赤羽淳平 | 120h |  |
| 185 | 9.1.13.2.10 | 起動との連動 | 15d | 2008-02-11 | 2008-03-02 | 19, 20SF |  |  | 130d |  | start no earlier than 2008-02-08 | 赤羽淳平 | 120h |  |
| 186 | 9.1.13.2.11 | 速度チューニング | 10d | 2008-03-17 | 2008-03-28 | 165, 21SF |  |  | 102d |  | finish no earlier than 2008-02-29 | 赤羽淳平 | 80h |  |
| 187 | 9.1.14 | **ホットスポットサーチ** | 20d | 2008-02-11 A | 2008-03-02 |  | 53% | 9.33d | 131d |  |  |  | 120h | 64h |
| 188 | 9.1.14.1 | ライブラリ作成 | 10d | 2008-02-11 A | 2008-02-22 | 19 | 80% | 2d | 132d | 2d | start no earlier than 2008-02-08 | ネットワーク開発部 | 80h | 64h |
| 189 | 9.1.14.2 | ランチャーへの組み込み | 5d | 2008-02-25 | 2008-03-02 | 188, 20SF |  |  | 130d |  |  | 吉田光寿 | 40h |  |
| 190 | 9.1.15 | バッテリエクステンション | 10d | 2008-03-12 | 2008-03-25 | 69, 21SF |  |  | 107d |  | finish no earlier than 2008-02-29 | 村上豊 | 80h |  |
| 191 | 9.1.16 | **ISデバッガ対応** | 67d? | 2008-02-08 A | 2008-04-14 |  | 16% | 55.99d? | 87d |  |  |  | 1528h | 210.4h |
| 192 | 9.1.16.1 | 開発サポート | 46d | 2008-02-11 A | 2008-04-14 | 7FF | 30% | 32.2d | 87d |  | finish no earlier than 2008-03-13 | 中島高伸 | 368h | 110.4h |
| 193 | 9.1.16.2 | 安定度を上げる | 25d | 2008-02-11 A | 2008-03-14 | 19, 20SF | 50% | 12.5d | 118d |  | finish no earlier than 2008-03-14 | 中島高伸 | 200h | 100h |
| 194 | 9.1.16.3 | ハードウェアリセット対応 | 25d | 2008-02-11 | 2008-03-16 | 19, 21SF |  |  | 116d |  | finish no earlier than 2008-02-29 | 吉岡照幸 | 200h |  |
| 195 | 9.1.16.4 | NANDファイルシステム終了処理 | 1d? | 2008-02-08 | 2008-02-08 |  |  |  | 153d |  |  |  |  |  |
| 196 | 9.1.16.5 | NTRモードデバッグ | 25d | 2008-02-11 | 2008-03-16 | 19, 21SF |  |  | 116d |  | start no earlier than 2008-02-08 | 中島高伸 | 200h |  |
| 197 | 9.1.16.6 | TWL-HYBアプリのNTRモードデバッグ | 1d? | 2008-02-08 | 2008-02-08 |  |  |  | 153d |  |  |  |  |  |
| 198 | 9.1.16.7 | バナーViewモード対応 | 1d? | 2008-02-08 | 2008-02-08 |  |  |  | 153d |  |  |  |  |  |
| 199 | 9.1.16.8 | TLFモードフラグ対応（署名やAESチェックを無効にする） | 1d? | 2008-02-08 | 2008-02-08 |  |  |  | 153d |  |  |  |  |  |

| ID | WBS | Task | Duration | Start | Finish | Predecessors | Complete | Remaining | Total slack | Free slack | Constraint | Resources | Work | Actual work |
| --- | --- | --- | --- | --- | --- | --- | --- | --- | --- | --- | --- | --- | --- | --- |
| 200 | 9.1.16.9 | **NANDアプリデバッグ** | 48d | 2008-02-11 | 2008-03-30 |  |  |  | 102d |  |  |  | 560h |  |
| 201 | 9.1.16.9.1 | 暫定対応 | 25d | 2008-02-11 | 2008-03-16 | 19, 21SF |  |  | 102d | 1d |  | 中島高伸; 吉岡照幸 | 400h |  |
| 202 | 9.1.16.9.2 | 本対応 | 10d | 2008-03-17 | 2008-03-30 | 201, 22SF |  |  | 102d |  |  | 中島高伸; 吉岡照幸 | 160h |  |
| 203 | 9.2 | **本体設定** | 25d? | 2008-02-08 A | 2008-03-03 |  | 84% | 3.97d? | 129d |  |  |  | 312h | 262.4h |
| 204 | 9.2.1 | 実装 | 1d? | 2008-02-08 A | 2008-02-08 |  | 80% | 0.2d? | 153d |  |  | 吉田光寿 | 8h | 6.4h |
| 205 | 9.2.2 | ペアレンタルコントロール設定（仕様確定待ち） | 8d? | 2008-02-21 A | 2008-03-03 A |  | 100% |  |  |  | finish no earlier than 2008-03-03 | 西川猛司 | 64h | 64h |
| 206 | 9.2.3 | **本体初期化（各モジュールの初期化仕様fix待ち）** | 20d | 2008-02-11 A | 2008-03-02 |  | 80% | 4d | 131d |  |  |  | 240h | 192h |
| 207 | 9.2.3.1 | ツール（NandInitializer） | 15d | 2008-02-11 A | 2008-03-02 | 19, 20SF | 80% | 3d | 131d |  |  | 神川洋司 | 120h | 96h |
| 208 | 9.2.3.2 | ライブラリ | 15d | 2008-02-11 A | 2008-03-02 | 19, 20SF | 80% | 3d | 131d |  |  | 神川洋司 | 120h | 96h |
| 210 | 10 | NANDファーム | 25d | 2008-02-11 A | 2008-03-16 | 19, 21SF | 98% | 0.5d | 117d |  |  | 村上豊 | 200h | 196h |
| 212 | 11 | **TwlSDK** | 38d? | 2008-02-08 A | 2008-03-16 |  | 50% | 19.06d? | 116d |  |  |  | 2960h | 1576h |
| 213 | 11.1 | **ツール** | 37d? | 2008-02-08 A | 2008-03-16 |  | 18% | 30.42d? | 117d |  |  |  | 360h | 64h |
| 214 | 11.1.1 | **makerom.TWL** | 36d? | 2008-02-08 A | 2008-03-14 |  | 14% | 30.86d? | 118d |  |  |  | 112h | 16h |
| 215 | 11.1.1.1 | 領域のワーニング修正 | 1d | 2008-03-14 | 2008-03-14 | 19, 20SF |  |  | 118d |  | finish no earlier than 2008-03-14 | 吉岡照幸 | 8h |  |
| 216 | 11.1.1.2 | TWL領域用キーテーブル埋め込み | 1d | 2008-03-14 | 2008-03-14 | 19, 20SF |  |  | 118d |  | finish no earlier than 2008-03-14 | 吉岡照幸 | 8h |  |
| 217 | 11.1.1.3 | ペアレンタルコントロール対応 | 1d | 2008-03-14 | 2008-03-14 | 19, 20SF |  |  | 118d |  | finish no earlier than 2008-03-14 | 吉岡照幸 | 8h |  |
| 218 | 11.1.1.4 | TMPブート対応ビットの新設 | 1d? | 2008-02-08 A | 2008-02-08 A |  | 100% |  |  |  |  | 吉岡照幸 | 8h | 8h |
| 219 | 11.1.1.5 | 鍵アクセスコントロール情報の新設 | 1d? | 2008-03-14 | 2008-03-14 | 19, 20SF |  |  | 118d |  | finish no earlier than 2008-03-14 | 吉岡照幸 | 8h |  |
| 220 | 11.1.1.6 | カードリージョン情報の新設 | 1d? | 2008-03-14 | 2008-03-14 | 19, 20SF |  |  | 118d |  | finish no earlier than 2008-03-14 | 吉岡照幸 | 8h |  |
| 221 | 11.1.1.7 | Privateセーブデータのサイズ固定 | 1d? | 2008-03-14 | 2008-03-14 | 19, 20SF |  |  | 118d |  | finish no earlier than 2008-03-14 | 吉岡照幸 | 8h |  |
| 222 | 11.1.1.8 | SD使用可能特別版対応 | 1d | 2008-03-14 | 2008-03-14 | 19, 20SF |  |  | 118d |  | finish no earlier than 2008-03-14 | 吉岡照幸 | 8h |  |
| 223 | 11.1.1.9 | システム/ショップアプリ開発特別版対応 | 1d | 2008-02-11 A | 2008-02-11 A | 19, 20SF | 100% |  |  |  |  | 吉岡照幸 | 8h | 8h |
| 224 | 11.1.1.10 | NTR-SRL署名対応特別版 | 5d | 2008-03-10 | 2008-03-14 | 19, 20SF |  |  | 116d |  | finish no earlier than 2008-03-14 | 吉岡照幸 | 40h |  |
| 225 | 11.1.2 | **maketad** | 34d | 2008-02-11 | 2008-03-16 |  |  |  | 109d | 1d |  |  | 200h |  |
| 226 | 11.1.2.1 | バイナリファイル対応 | 25d | 2008-02-11 | 2008-03-16 | 19, 21SF |  |  | 109d |  |  | 大島 洋一 | 200h |  |

| ID | WBS | Task | Duration | Start | Finish | Predecessors | Complete | Remaining | Total slack | Free slack | Constraint | Resources | Work | Actual work |
| --- | --- | --- | --- | --- | --- | --- | --- | --- | --- | --- | --- | --- | --- | --- |
| 227 | 11.1.3 | **makebanner.TWL** | 22d? | 2008-02-08 A | 2008-02-29 A |  | 100% |  |  |  |  |  | 40h | 40h |
| 228 | 11.1.3.1 | NTRアイコンIN→TWLバナーOUT対応 | 4d | 2008-02-08 A | 2008-02-13 A | 19, 20SF | 100% |  |  |  |  | 吉岡照幸 | 32h | 32h |
| 229 | 11.1.3.2 | サブバナー対応 | 1d? | 2008-02-29 A | 2008-02-29 A | 19, 20SF | 100% |  |  |  | start no earlier than 2008-02-29 | 吉岡照幸 | 8h | 8h |
| 230 | 11.1.4 | bannercvtr | 1d | 2008-02-08 A | 2008-02-08 A | 19, 21SF | 100% |  |  |  |  | 遠藤高志 | 8h | 8h |
| 231 | 11.2 | **ライブラリ** | 35d | 2008-02-11 A | 2008-03-16 |  | 56% | 15.54d | 116d |  |  |  | 2600h | 1512h |
| 232 | 11.2.1 | reboot | 15d | 2008-02-11 A | 2008-03-02 | 19, 20SF | 80% | 3d | 131d |  |  | 中島高伸 | 120h | 96h |
| 233 | 11.2.2 | os/launcherParam | 15d | 2008-02-11 A | 2008-03-02 | 19, 20SF | 80% | 3d | 131d |  |  | 吉田光寿 | 120h | 96h |
| 234 | 11.2.3 | lcfg | 15d | 2008-02-11 A | 2008-03-02 | 19, 20SF | 80% | 3d | 131d |  |  | 吉岡照幸 | 120h | 96h |
| 235 | 11.2.4 | nam | 25d | 2008-02-11 A | 2008-03-16 | 19, 21SF | 70% | 7.5d | 117d |  |  | 畠本 稔 | 200h | 140h |
| 236 | 11.2.5 | マイコン | 15d | 2008-02-11 A | 2008-03-02 A | 19, 20SF | 100% |  |  |  |  | 村上豊 | 120h | 120h |
| 237 | 11.2.6 | カメラ | 25d | 2008-02-11 A | 2008-03-16 | 19, 21SF | 70% | 7.5d | 117d |  |  | 村上豊 | 200h | 140h |
| 238 | 11.2.7 | Codec | 15d | 2008-02-11 A | 2008-03-02 | 19, 20SF | 70% | 4.5d | 131d |  |  | 神川洋司 | 120h | 84h |
| 239 | 11.2.8 | **FS** | 35d | 2008-02-11 A | 2008-03-16 |  | 34% | 23.1d | 116d |  |  |  | 1600h | 740h |
| 240 | 11.2.8.1 | 電源OFF,リセット時の終端処理 | 25d | 2008-02-11 | 2008-03-16 | 19, 21SF |  |  | 116d |  | finish no earlier than 2008-03-16 | 吉崎 浩二 | 200h |  |
| 241 | 11.2.8.2 | FSのAES暗号化 | 25d | 2008-02-11 A | 2008-03-16 A | 19, 21SF | 100% |  |  |  |  | 白井達広; 村上豊 | 400h | 400h |
| 242 | 11.2.8.3 | 速度チューニング | 25d | 2008-02-11 | 2008-03-16 | 19, 21SF |  |  | 116d |  |  | 吉崎 浩二 | 200h |  |
| 243 | 11.2.8.4 | SRLのハッシュチェック | 25d | 2008-02-11 A | 2008-03-16 | 19, 21SF | 20% | 20d | 117d |  |  | 吉崎 浩二 | 200h | 40h |
| 244 | 11.2.8.5 | NANDアクセス権管理 | 25d | 2008-02-11 A | 2008-03-16 | 19, 21SF | 50% | 12.5d | 117d |  |  | 吉崎 浩二; 吉岡照幸; 廣瀬 和樹 | 600h | 300h |
| 246 | 12 | **WiFi関係ライブラリ** | 36d? | 2008-02-08 A | 2008-03-14 |  | 64% | 12.85d? | 118d |  |  |  | 616h | 387.2h |
| 247 | 12.1 | ncfgライブラリ | 1d? | 2008-02-08 A | 2008-02-08 A |  | 100% |  |  |  |  | 清木 昌 | 8h | 8h |
| 248 | 12.2 | WPAを使ったAOSSの接続情報の保存 | 1d? | 2008-02-08 | 2008-02-08 |  |  |  | 153d |  |  | Buffalo外注 | 8h |  |
| 249 | 12.3 | WPAを使ったらくらくの接続情報の保存 | 1d? | 2008-02-08 | 2008-02-08 |  |  |  | 153d |  |  | NEC外注 | 8h |  |
| 250 | 12.4 | **ACライブラリ** | 29d? | 2008-02-08 A | 2008-03-07 |  | 77% | 6.63d? | 125d |  |  |  | 168h | 129.6h |
| 251 | 12.4.1 | 1stリリース | 9d? | 2008-02-08 A | 2008-02-20 A |  | 100% |  |  |  | start no earlier than 2008-02-08 | ネットワーク開発部 | 72h | 72h |
| 252 | 12.4.2 | FIX | 12d | 2008-02-21 A | 2008-03-07 | 251 | 60% | 4.8d | 125d |  | start no earlier than 2008-02-21 | ネットワーク開発部 | 96h | 57.6h |
| 253 | 12.5 | WiFi設定移行 | 1d? | 2008-02-08 | 2008-02-08 |  |  |  | 70d | 0d |  | ネットワーク開発部 | 8h |  |
| 254 | 12.6 | WiFi設定ユーティリティ | 26d? | 2008-02-08 A | 2008-03-14 |  | 60% | 10.4d? | 118d |  | finish no earlier than 2008-03-14 | 安達 洋明; 清木 昌 | 416h | 249.6h |

| ID | WBS | Task | Duration | Start | Finish | Predecessors | Complete | Remaining | Total slack | Free slack | Constraint | Resources | Work | Actual work |
| --- | --- | --- | --- | --- | --- | --- | --- | --- | --- | --- | --- | --- | --- | --- |
| 256 | 13 | **eTicket** | 51d? | 2008-02-08 A | 2008-03-30 |  | 30% | 35.66d? | 103d |  |  |  | 2160h | 707.2h |
| 257 | 13.1 | **ESライブラリ** | 50d? | 2008-02-08 A | 2008-03-28 |  | 50% | 25d? | 97d | 2d |  |  | 864h | 432h |
| 258 | 13.1.1 | 実装 | 36d? | 2008-02-08 A | 2008-03-28 |  | 50% | 18d? | 97d |  | finish no earlier than 2008-03-28 | BroadOn | 288h | 144h |
| 259 | 13.1.2 | 検証 | 36d? | 2008-02-08 A | 2008-03-28 |  | 50% | 18d? | 97d |  | finish no earlier than 2008-03-28 | 大島 洋一; 畠本 稔 | 576h | 288h |
| 260 | 13.2 | **NUPライブラリ** | 50d? | 2008-02-08 A | 2008-03-28 |  | 20% | 40d? | 104d |  |  |  | 576h | 115.2h |
| 261 | 13.2.1 | 実装 | 36d? | 2008-02-08 A | 2008-03-28 |  | 20% | 28.8d? | 104d |  | finish no earlier than 2008-03-28 | BroadOn | 288h | 57.6h |
| 262 | 13.2.2 | 検証 | 36d? | 2008-02-08 A | 2008-03-28 |  | 20% | 28.8d? | 104d |  | finish no earlier than 2008-03-28 | 稲葉 公崇 | 288h | 57.6h |
| 263 | 13.3 | **CLSサーバ** | 51d | 2008-02-08 A | 2008-03-30 |  | 13% | 44.62d | 103d |  |  |  | 320h | 40h |
| 264 | 13.3.1 | 開発用セットアップ | 5d | 2008-02-08 A | 2008-02-14 A | 19, 20SF | 100% |  |  |  |  | 畠本 稔 | 40h | 40h |
| 265 | 13.3.2 | 製品用セットアップ | 35d | 2008-02-11 | 2008-03-30 | 19, 22SF |  |  | 102d |  |  | 畠本 稔 | 280h |  |
| 266 | 13.4 | **NUPサーバ** | 48d | 2008-02-11 A | 2008-03-30 |  | 30% | 33.6d | 103d |  |  |  | 400h | 120h |
| 267 | 13.4.1 | 開発用セットアップ | 15d | 2008-02-11 A | 2008-03-02 A | 19, 20SF | 100% |  |  |  |  | ネットワーク開発部 | 120h | 120h |
| 268 | 13.4.2 | 製品用セットアップ | 35d | 2008-02-11 | 2008-03-30 | 19, 22SF |  |  | 102d |  |  | ネットワーク開発部 | 280h |  |
| 270 | 14 | **UIGシステムメニュー** | 98d? | 2008-02-08 | 2008-05-15 |  |  |  | 56d |  |  |  | 6168h |  |
| 271 | 14.1 | 仕様策定 | 1d? | 2008-02-08 | 2008-02-08 |  |  |  | 153d |  |  | 松島愛佑 | 8h |  |
| 272 | 14.2 | フォント | 1d? | 2008-02-08 | 2008-02-08 |  |  |  | 153d |  |  |  |  |  |
| 273 | 14.3 | **ランチャー** | 98d? | 2008-02-08 | 2008-05-15 |  |  |  | 56d |  |  | 川瀬 智広; 荒木 勉 | 1120h |  |
| 274 | 14.3.1 | 実装 | 83d? | 2008-02-08 | 2008-04-30 |  |  |  | 71d |  | start no earlier than 2008-02-08 |  |  |  |
| 275 | 14.3.2 | デバッグ | 31d? | 2008-04-15 | 2008-05-15 |  |  |  | 56d |  | finish no earlier than 2008-05-15 |  |  |  |
| 276 | 14.4 | **本体設定** | 98d? | 2008-02-08 | 2008-05-15 |  |  |  | 56d |  |  | 小野沢祐貴 | 560h |  |
| 277 | 14.4.1 | 実装 | 83d? | 2008-02-09 | 2008-05-01 | 253 |  |  | 70d |  | start no earlier than 2008-02-08 |  |  |  |
| 278 | 14.4.2 | WiFi設定 | 36d? | 2008-02-08 | 2008-03-14 |  |  |  | 118d |  | start no earlier than 2008-02-08 |  |  |  |
| 279 | 14.4.3 | デバッグ | 31d? | 2008-04-15 | 2008-05-15 |  |  |  | 56d |  | finish no earlier than 2008-05-15 |  |  |  |
| 280 | 14.5 | **ショップ** | 98d? | 2008-02-08 | 2008-05-15 |  |  |  | 56d |  |  | 中谷; 和田 | 1120h |  |
| 281 | 14.5.1 | 実装 | 83d? | 2008-02-08 | 2008-04-30 |  |  |  | 71d |  | start no earlier than 2008-02-08 |  |  |  |
| 282 | 14.5.2 | デバッグ | 31d? | 2008-04-15 | 2008-05-15 |  |  |  | 56d |  | finish no earlier than 2008-05-15 |  |  |  |

| ID | WBS | Task | Duration | Start | Finish | Predecessors | Complete | Remaining | Total slack | Free slack | Constraint | Resources | Work | Actual work |
| --- | --- | --- | --- | --- | --- | --- | --- | --- | --- | --- | --- | --- | --- | --- |
| 283 | 14.6 | **写真帳** | 98d? | 2008-02-08 | 2008-05-15 |  |  |  | 56d |  |  | 河野裕之 | 560h |  |
| 284 | 14.6.1 | 実装 | 83d? | 2008-02-08 | 2008-04-30 |  |  |  | 71d |  | start no earlier than 2008-02-08 |  |  |  |
| 285 | 14.6.2 | デバッグ | 31d? | 2008-04-15 | 2008-05-15 |  |  |  | 56d |  | finish no earlier than 2008-05-15 |  |  |  |
| 286 | 14.7 | **ピクトチャット** | 98d? | 2008-02-08 | 2008-05-15 |  |  |  | 56d |  |  | 川瀬 智広; 荒木 勉 | 1120h |  |
| 287 | 14.7.1 | 実装 | 83d? | 2008-02-08 | 2008-04-30 |  |  |  | 71d |  | start no earlier than 2008-02-08 |  |  |  |
| 288 | 14.7.2 | デバッグ | 31d? | 2008-04-15 | 2008-05-15 |  |  |  | 56d |  | finish no earlier than 2008-05-15 |  |  |  |
| 289 | 14.8 | **DSダウンロードプレイ** | 98d? | 2008-02-08 | 2008-05-15 |  |  |  | 56d |  |  | 川瀬 智広; 荒木 勉 | 1120h |  |
| 290 | 14.8.1 | 実装 | 83d? | 2008-02-08 | 2008-04-30 |  |  |  | 71d |  | start no earlier than 2008-02-08 |  |  |  |
| 291 | 14.8.2 | デバッグ | 31d? | 2008-04-15 | 2008-05-15 |  |  |  | 56d |  | finish no earlier than 2008-05-15 |  |  |  |
| 292 | 14.9 | **新型配信システム** | 98d? | 2008-02-08 | 2008-05-15 |  |  |  | 56d |  |  | ネットワーク開発部 | 560h |  |
| 293 | 14.9.1 | 実装 | 83d? | 2008-02-08 | 2008-04-30 |  |  |  | 71d |  | start no earlier than 2008-02-08 |  |  |  |
| 294 | 14.9.2 | デバッグ | 31d? | 2008-04-15 | 2008-05-15 |  |  |  | 56d |  | finish no earlier than 2008-05-15 |  |  |  |
| 296 | 15 | **ROMマスター作成** | 51d? | 2008-02-08 A | 2008-03-30 |  | 31% | 35.25d? | 103d |  |  |  | 456h | 140.8h |
| 297 | 15.1 | ROMマスタリングツール | 22d? | 2008-02-08 A | 2008-03-10 |  | 80% | 4.4d? | 122d |  | start no earlier than 2008-02-08 | 西川猛司 | 176h | 140.8h |
| 298 | 15.2 | TWLカードのTWL領域用キーテーブル生成ツール | 35d | 2008-02-11 | 2008-03-30 | 19, 22SF |  |  | 102d |  |  | 中島高伸 | 280h |  |
| 300 | 16 | **デバッグ関係** | 25d? | 2008-04-01 | 2008-04-25 |  |  |  | 76d |  |  |  |  |  |
| 301 | 16.1 | 必要となるプログラム洗い出し | 4d? | 2008-04-01 | 2008-04-04 |  |  |  | 78d | 2d | finish no earlier than 2008-04-04 |  |  |  |
| 302 | 16.2 | テストプログラム作成 | 19d? | 2008-04-07 | 2008-04-25 | 301 |  |  | 76d |  | start no earlier than 2008-04-07 |  |  |  |
| 304 | 17 | **生産工程用プログラム** | 107d? | 2008-02-08 A | 2008-05-25 |  | 4% | 102.62d? | 47d |  |  |  | 176h | 7.2h |
| 305 | 17.1 | 必要となるプログラム洗い出し | 1d? | 2008-02-08 | 2008-02-08 |  |  |  | 153d |  |  | 製品技術部 | 8h |  |
| 306 | 17.2 | SDカードダイレクトブート | 1d? | 2008-04-01 A | 2008-04-01 |  | 90% | 0.1d? | 100d |  |  | 村上豊 | 8h | 7.2h |
| 307 | 17.3 | **生産工程用RED仮ランチャー** | 34d | 2008-04-21 | 2008-05-25 |  |  |  | 47d |  |  |  | 160h |  |
| 308 | 17.3.1 | 仕様FIX | 10d | 2008-04-21 | 2008-05-02 |  |  |  | 53d | 9d | start no earlier than 2008-04-21 | 製品技術部 | 80h |  |
| 309 | 17.3.2 | 実装 | 10d | 2008-05-12 | 2008-05-25 | 308, 14SF-10d |  |  | 46d |  |  | ？ | 80h |  |
